# metric-sys-wbs

How a schedule from MS Project changed from version to version. A marks actual dates.

## Version 1 (saved 2020-05-25)

Note of the change: finished the physical model and model vocabulary.

| ID | Task | Duration | Start | Finish | Predecessors | Total float | Constraint |
| --- | --- | --- | --- | --- | --- | --- | --- |
| 1 | Web应用技术架构选型 | 2d | 2020-05-26 | 2020-05-27 |  | 0d | start no earlier than 2020-05-26 |
| 2 | 确定前端页面样式规范 | 1d? | 2020-05-25 | 2020-05-25 |  |  | finish no earlier than 2020-05-28 |
| 3 | 完成物理数据模型 | 3d | 2020-05-26 | 2020-05-28 |  | 0d | finish no earlier than 2020-05-28 |
| 4 | 搭建Web应用开发环境 | 1d? | 2020-05-28 | 2020-05-28 | 1 | 0d |  |

## Version 2 (saved 2020-05-27)

Note of the change: add project plan and web-app prototype.

Last finish 2020-05-28 → 2020-06-04 (+7d). Complete tasks 0 → 1.

Added:

| ID | Task | Duration | Start | Finish | Predecessors | Resources |
| --- | --- | --- | --- | --- | --- | --- |
| 5 | **Web应用页面原型** | 6d? | 2020-05-28 | 2020-06-04 |  |  |
| 6 | 数据查询分析 | 5d | 2020-05-28 | 2020-06-03 |  | 肖燏 |
| 7 | 指标体系管理 | 5d | 2020-05-28 | 2020-06-03 |  | 肖燏 |
| 8 | 数据权限管理 | 5d | 2020-05-28 | 2020-06-03 |  | 宋超群 |
| 9 | 数据接口管理 | 5d | 2020-05-28 | 2020-06-03 |  | 宋超群 |
| 10 | 系统管理 | 5d | 2020-05-28 | 2020-06-03 |  | 魏亚远 |
| 11 | 原型评审（第一轮） | 1d | 2020-06-04 | 2020-06-04 | 6, 7, 8, 9, 10 | 宋超群; 戴桂春; 肖燏; 魏亚远 |

Changed:

| ID | Task | Start | Finish | Duration | Complete | Total float | Other |
| --- | --- | --- | --- | --- | --- | --- | --- |
| 1 | Web应用技术架构选型 |  |  |  |  | 0d → 3d | resources 肖燏 [30%]; 魏亚远 → 魏亚远; 宋超群 |
| 3 | 完成物理数据模型 | 2020-05-26 A | 2020-05-28 → 2020-05-27 A (-1d) | 3d → 2d | 0% → 100% | 0d → none | constraint finish no earlier than 2020-05-28 → start no earlier than 2020-05-26; resources 肖燏 [50%] → 肖燏 |
| 4 | 搭建Web应用开发环境 |  | 2020-05-28 → 2020-05-29 (+1d) | 1d? → 2d? |  | 0d → 3d | constraint none → start no earlier than 2020-05-28 |

## Version 3 (saved 2020-06-15)

Note of the change: daily commit

Last finish 2020-06-04 → 2020-11-24 (+173d). Complete tasks 1 → 8.

Added:

| ID | Task | Duration | Start | Finish | Predecessors | Constraint | Resources |
| --- | --- | --- | --- | --- | --- | --- | --- |
| 12 | **系统测试** | 132d | 2020-05-25 A | 2020-11-24 |  |  |  |
| 13 | **测试数据开发** | 13d | 2020-05-25 A | 2020-06-10 |  |  |  |
| 14 | 测试管理数据开发 | 2d | 2020-06-09 A | 2020-06-10 A |  |  | 肖燏 |
| 15 | 测试指标数据开发 | 2d | 2020-05-25 | 2020-05-26 |  |  |  |
| 16 | **测试用例开发** | 48d | 2020-09-18 | 2020-11-24 |  |  |  |
| 17 | Web应用测试案例开发 | 10d | 2020-11-11 | 2020-11-24 | 19 |  | 魏亚远 |
| 18 | 后台服务测试案例开发 | 10d | 2020-09-18 | 2020-10-01 | 54 |  | 肖燏 |
| 19 | **Web应用开发** | 116d | 2020-06-02 A | 2020-11-10 |  |  | 魏亚远 |
| 20 | 系统首页 | 4d | 2020-06-02 A | 2020-06-05 |  | start no earlier than 2020-06-02 | 魏亚远 |
| 21 | 指标目录树组件开发 | 6d | 2020-06-08 A | 2020-06-15 | 20 |  | 魏亚远 |
| 22 | **系统管理** | 73d | 2020-06-16 | 2020-09-24 |  |  | 魏亚远 |
| 23 | 系统日志分析 | 4d | 2020-09-11 | 2020-09-16 | 53 |  | 魏亚远 |
| 24 | 用户角色管理 | 5d | 2020-06-16 | 2020-06-22 | 21 |  | 魏亚远 |
| 25 | 指标数据源管理 | 5d | 2020-06-23 | 2020-06-29 | 24 |  | 魏亚远 |
| 26 | **指标仓库管理** | 8d | 2020-06-30 | 2020-07-09 |  |  | 魏亚远 |
| 27 | 指标维度维护 | 4d | 2020-06-30 | 2020-07-03 | 25 |  | 魏亚远 |
| 28 | 指标主表维护 | 4d | 2020-07-06 | 2020-07-09 | 27 |  | 魏亚远 |
| 29 | 系统运行报告 | 6d | 2020-09-17 | 2020-09-24 | 23 |  | 魏亚远 |
| 30 | **指标查询分析** | 64d | 2020-08-13 | 2020-11-10 |  |  | 魏亚远 |
| 31 | **指标数据查询** | 11d | 2020-08-13 | 2020-08-27 |  |  | 魏亚远 |
| 32 | 常用查询管理 | 4d | 2020-08-13 | 2020-08-18 | 48 |  | 魏亚远 |
| 33 | 指标数据导出 | 3d | 2020-08-19 | 2020-08-21 | 32 |  | 魏亚远 |
| 34 | 一般指标查询 | 4d | 2020-08-24 | 2020-08-27 | 33 |  | 魏亚远 |
| 35 | **指标仪表盘** | 33d | 2020-09-25 | 2020-11-10 |  |  | 魏亚远 |
| 36 | 仪表盘展示 | 10d | 2020-09-25 | 2020-10-08 | 29 |  | 魏亚远 |
| 37 | 仪表盘页面管理 | 5d | 2020-10-09 | 2020-10-15 | 36 |  | 魏亚远 |
| 38 | 仪表盘页面内容管理 | 8d | 2020-10-16 | 2020-10-27 | 37 |  | 魏亚远 |
| 39 | 图表管理 | 10d | 2020-10-28 | 2020-11-10 | 38 |  | 魏亚远 |
| 40 | **指标体系管理** | 22d | 2020-07-10 | 2020-08-10 |  |  | 魏亚远 |
| 41 | 指标目录维护 | 4d | 2020-07-10 | 2020-07-15 | 28 |  | 魏亚远 |
| 42 | **指标维护** | 12d | 2020-07-16 | 2020-07-31 |  |  | 魏亚远 |
| 43 | 指标查询 | 4d | 2020-07-16 | 2020-07-21 | 41 |  | 魏亚远 |
| 44 | 基本指标维护 | 4d | 2020-07-22 | 2020-07-27 | 43 |  | 魏亚远 |
| 45 | 衍生指标维护 | 4d | 2020-07-28 | 2020-07-31 | 44 |  | 魏亚远 |
| 46 | 指标目录审核 | 3d | 2020-08-03 | 2020-08-05 | 45 |  | 魏亚远 |
| 47 | 指标审核 | 3d | 2020-08-06 | 2020-08-10 | 46 |  | 魏亚远 |
| 48 | 数据权限管理 | 2d | 2020-08-11 | 2020-08-12 | 47 |  | 魏亚远 |
| 49 | **指标接口管理** | 10d | 2020-08-28 | 2020-09-10 |  |  | 魏亚远 |
| 50 | **指标接口维护** | 7d | 2020-08-28 | 2020-09-07 |  |  | 魏亚远 |
| 51 | 指标接口查询 | 4d | 2020-08-28 | 2020-09-02 | 34 |  | 魏亚远 |
| 52 | 指标接口查询条件设置 | 3d | 2020-09-03 | 2020-09-07 | 51 |  | 魏亚远 |
| 53 | 指标接口审核 | 3d | 2020-09-08 | 2020-09-10 | 52 |  | 魏亚远 |
| 54 | **后台服务及核心算法开发** | 68d | 2020-06-16 | 2020-09-17 |  |  | 肖燏 |
| 55 | **批量指标加载** | 22d | 2020-06-16 | 2020-07-15 |  |  | 肖燏 |
| 56 | 计算指标加载顺序 | 3d | 2020-06-16 | 2020-06-18 |  |  | 肖燏 |
| 57 | 基础指标加载 | 7d | 2020-06-19 | 2020-06-29 | 56 |  | 肖燏 |
| 58 | 衍生指标加载 | 6d | 2020-06-30 | 2020-07-07 | 57 |  | 肖燏 |
| 59 | 指标数据汇总 | 6d | 2020-07-08 | 2020-07-15 | 58 |  | 肖燏 |
| 60 | **流式指标加载** | 18d | 2020-07-16 | 2020-08-10 |  |  | 肖燏 |
| 61 | 基础指标加载 | 7d | 2020-07-16 | 2020-07-24 | 59 |  | 肖燏 |
| 62 | 衍生指标加载 | 6d | 2020-07-27 | 2020-08-03 | 61 |  | 肖燏 |
| 63 | 指标数据汇总 | 5d | 2020-08-04 | 2020-08-10 | 62 |  | 肖燏 |
| 64 | 指标数据同步 | 8d | 2020-08-11 | 2020-08-20 | 63 |  | 肖燏 |
| 65 | 指标接口服务 | 10d | 2020-08-21 | 2020-09-03 | 64 |  | 肖燏 |
| 66 | 指标数据访问权限控制服务 | 10d | 2020-09-04 | 2020-09-17 | 65 |  | 肖燏 |

Changed:

| ID | Task | Start | Finish | Complete | Total float | Other |
| --- | --- | --- | --- | --- | --- | --- |
| 4 | 搭建Web应用开发环境 | 2020-05-28 A | 2020-05-29 A | 0% → 100% | 3d → none |  |
| 5 | **Web应用页面原型** | 2020-05-28 A |  | 0% → 96% |  |  |
| 6 | 数据查询分析 | 2020-05-28 A | 2020-06-03 A | 0% → 100% | 0d → none |  |
| 7 | 指标体系管理 | 2020-05-28 A | 2020-06-03 A | 0% → 100% | 0d → none |  |
| 8 | 数据权限管理 | 2020-05-28 A | 2020-06-03 A | 0% → 100% | 0d → none | resources 宋超群 → 宋超群; 肖燏 |
| 9 | 数据接口管理 | 2020-05-28 A | 2020-06-03 A | 0% → 100% | 0d → none | resources 宋超群 → 肖燏 |
| 10 | 系统管理 | 2020-05-28 A | 2020-06-03 A | 0% → 100% | 0d → none | resources 魏亚远 → 肖燏 |
| 11 | 原型评审（第一轮） |  |  |  | 0d → 150d | resources 宋超群; 戴桂春; 肖燏; 魏亚远 → none |

## Version 4 (saved 2020-06-22)

Note of the change: daily commit

Last finish stays 2020-11-24.

Added:

| ID | Task | Duration | Start | Finish | Resources |
| --- | --- | --- | --- | --- | --- |
| 19 | **测试环境开发** | 4d | 2020-05-25 | 2020-05-28 |  |
| 20 | Web应用测试环境开发（Docker） | 4d | 2020-05-25 | 2020-05-28 | 肖燏 |
| 21 | 后台服务测试环境开发（Docker） | 4d | 2020-05-25 | 2020-05-28 | 肖燏 |

Changed:

| ID | Task | Start | Duration | Complete |
| --- | --- | --- | --- | --- |
| 12 | **系统测试** |  |  | 8% → 6% |
| 16 | **测试用例开发** | 2020-09-18 → 2020-05-25 (-116d) | 48d → 132d |  |
