# 指标管理系统工作计划

How a schedule from MS Project changed from version to version. A marks actual dates.

## Version 1 (saved 2020-05-27)

Note of the change: add project plan and web-app prototype.

| ID | WBS | Task | Duration | Start | Finish | Predecessors | Complete | Total float | Constraint |
| --- | --- | --- | --- | --- | --- | --- | --- | --- | --- |
| 1 |  | Web应用技术架构选型 | 2d | 2020-05-26 | 2020-05-27 |  |  | 4d | start no earlier than 2020-05-26 |
| 2 |  | 确定前端页面样式规范 | 1d? | 2020-05-25 | 2020-05-25 |  |  |  | finish no earlier than 2020-05-28 |
| 3 |  | 完成物理数据模型 | 2d | 2020-05-26 A | 2020-05-27 A |  | 100% |  | start no earlier than 2020-05-26 |
| 4 |  | 搭建Web应用开发环境 | 2d? | 2020-05-28 | 2020-05-29 | 1 |  | 4d | start no earlier than 2020-05-28 |
| 5 | 5 | **Web应用页面原型** | 6d? | 2020-05-28 | 2020-06-04 |  |  |  |  |
| 6 |  | 数据查询分析 | 5d | 2020-05-28 | 2020-06-03 |  |  | 0d |  |
| 7 |  | 指标体系管理 | 5d | 2020-05-28 | 2020-06-03 |  |  | 0d |  |
| 8 |  | 数据权限管理 | 5d | 2020-05-28 | 2020-06-03 |  |  | 0d |  |
| 9 |  | 数据接口管理 | 5d | 2020-05-28 | 2020-06-03 |  |  | 0d |  |
| 10 |  | 系统管理 | 5d | 2020-05-28 | 2020-06-03 |  |  | 0d |  |
| 11 |  | 原型评审（第一轮） | 1d | 2020-06-04 | 2020-06-04 | 6, 7, 8, 9, 10 |  | 0d |  |

## Version 2 (saved 2020-06-03)

Note of the change: daily commit

Last finish 2020-06-04 → 2020-06-30 (+26d). Complete tasks 1 → 4.

Added:

| ID | Task | Duration | Start | Finish | Constraint | Resources |
| --- | --- | --- | --- | --- | --- | --- |
| 12 | **Web应用原型开发** | 3d? | 2020-06-04 | 2020-06-08 |  |  |
| 13 | 首页和菜单框架 | 3d | 2020-06-04 | 2020-06-08 |  | 魏亚远 |
| 14 | 指标目录树展现和操作 | 2d | 2020-06-04 | 2020-06-05 |  | 魏亚远 |
| 15 | 指标查询分析 | 1d | 2020-06-04 | 2020-06-04 |  | 宋超群 |
| 16 | **指标仪表盘** | 19d | 2020-06-04 | 2020-06-30 |  | 郑良骢 |
| 17 | 指标仪表盘实现方案设计 | 5d | 2020-06-04 | 2020-06-10 | start no earlier than 2020-06-04 | 郑良骢 |
| 18 | 指标仪表盘展现 | 1d? | 2020-06-04 | 2020-06-04 |  |  |
| 19 | 指标仪表盘设置 | 1d? | 2020-06-04 | 2020-06-04 |  |  |
| 20 | 指标图表设计 | 1d? | 2020-06-04 | 2020-06-04 |  |  |
| 21 | 指标图表浏览/管理 | 1d? | 2020-06-04 | 2020-06-04 |  |  |

Changed:

| ID | Task | Start | Finish | Complete | Total float | Other |
| --- | --- | --- | --- | --- | --- | --- |
| 5 | **Web应用页面原型** | 2020-05-28 A |  | 0% → 42% |  |  |
| 6 | 数据查询分析 | 2020-05-28 A | 2020-06-03 A | 0% → 100% | 0d → none |  |
| 7 | 指标体系管理 | 2020-05-28 A | 2020-06-03 A | 0% → 100% | 0d → none |  |
| 10 | 系统管理 | 2020-05-28 A | 2020-06-03 A | 0% → 100% | 0d → none | resources 魏亚远 → 肖燏 |
